Schedule from GanttProject, 2018-04-17 to 2018-05-15.

## Calendars

- Project calendar: Mon-Fri working; Sat-Sun off.

## Schedule

| ID | WBS | Task | Duration | Start | Finish | 持续 | 完成度 | 资源 |
| --- | --- | --- | --- | --- | --- | --- | --- | --- |
| 1 | 1 | **停车场出入口管理系统V2.16版本计划** | 21d | 2018-04-17 | 2018-05-15 | 30 | 0 |  |
| 2 | 1.1 | **V2.16.1** | 8d | 2018-04-17 | 2018-04-26 |  |  |  |
| 3 | 1.1.1 | 嵌入停车场出口收费界面显示整次停车信息 | 4d | 2018-04-18 | 2018-04-23 | 3 |  | 李昌俊,邓洋江,杨德力 |
| 4 | 1.1.2 | 地上地下嵌入停车场可设置共有免费时长(相同区域的延时账单需要合并) | 3d | 2018-04-18 | 2018-04-20 | 3 |  | 李昌俊 |
| 5 | 1.1.3 | 修复岗亭端放行原因必填 | 2d | 2018-04-18 | 2018-04-19 | 2 |  | 邓洋江,杨德力 |
| 6 | 1.1.4 | 兼容XP系统41版本chrome浏览器,需要提供xp系统电脑 | 1d | 2018-04-18 | 2018-04-18 | 1 |  | 杨德力 |
| 7 | 1.1.5 | **开放平台接口相关需求** | 1d | 2018-04-17 | 2018-04-17 | 1 |  | 李昌俊,李安民 |
| 8 | 1.1.5.1 | 设置基本类型显示及语音播报 | 1d | 2018-04-17 | 2018-04-17 | 1 |  | 李昌俊,李安民 |
| 9 | 1.1.5.2 | 设置指定vip类型显示及语音播报 | 1d | 2018-04-17 | 2018-04-17 | 1 |  | 李昌俊,李安民 |
| 10 | 1.1.5.3 | 改造下发收费规则接口 | 1d | 2018-04-17 | 2018-04-17 | 1 |  | 李昌俊,李安民 |
| 11 | 1.1.5.4 | 黑名单上报接口 | 1d | 2018-04-17 | 2018-04-17 | 1 |  | 李昌俊,李安民 |
| 12 | 1.1.5.5 | 获取VEMS系统菜单树接口 | 1d | 2018-04-17 | 2018-04-17 | 1 |  | 李昌俊,李安民 |
| 13 | 1.1.5.6 | 启用/禁用VEMS菜单功能 | 1d | 2018-04-17 | 2018-04-17 | 1 |  | 李昌俊,李安民 |
| 14 | 1.1.6 | 增加vip批量续费的二次确认弹框 | 1d | 2018-04-23 | 2018-04-23 | 1 |  | 李昌俊 |
| 15 | 1.1.7 | vip开通续费模块vip名称改为下拉框 | 1d | 2018-04-23 | 2018-04-23 | 1 |  | 李昌俊 |
| 16 | 1.1.8 | vip开通续费增加二次确认弹窗 | 1d | 2018-04-24 | 2018-04-24 | 1 |  | 李昌俊 |
| 17 | 1.1.9 | 屏蔽vems数据权限的区分 | 1d | 2018-04-24 | 2018-04-24 | 1 |  | 李昌俊 |
| 18 | 1.1.10 | 联调 | 2d | 2018-04-25 | 2018-04-26 | 2 |  |  |
| 19 | 1.2 | **测试** | 13d | 2018-04-27 | 2018-05-15 |  |  | 何涌,陈茂春 |
| 20 | 1.2.1 | 第一轮 | 6d | 2018-04-27 | 2018-05-04 | 3 |  |  |
| 21 | 1.2.2 | 第二轮 | 3d | 2018-05-07 | 2018-05-09 | 3 |  |  |
| 22 | 1.2.3 | 第三轮 | 3d | 2018-05-10 | 2018-05-14 | 4 |  |  |
| 23 | 1.2.4 | 发布 | 1d | 2018-05-15 | 2018-05-15 |  |  |  |
