Schedule from MS Project, 2017-12-20 to 2018-05-10, A marks actual dates.
TIANSU

## Calendars

- 标准: Mon-Sun 08:00-12:00, 13:00-17:00.

## Resources

| Resource |
| --- |
| 深化设计图纸 |
| 装置功能测试报告 |
| 研发开发任务单 |
| 开发相关软硬件技术说明书及配置手册 |
| 相关技术说明书及配置手册 |
| 提供设备相关资料（合格证 |
| 型式试验报告 |
| 测试报告 |
| 说明书等） |
| 供应商资质信息 |
| 合格证 |
| 装置出场报告 |
| 检验报告 |
| 项目调试报告 |
| 项目实施过程动态跟踪表 |
| 内部验收报告 |
| 项目调试交接单 |
| 发货通知单 |
| 服务外包合同 |
| 工程实施方案 |
| 设备材料到货验收记录 |
| 通讯管理机参数配置表 |
| 现场设备调试记录 |
| 现场培训反馈表 |
| 竣工验收记录 |
| 竣工验收记录\项目决算书 |
| 项目决算书 |
| 系统移交单 |
| 设备移交单 |
| 项目软件版本清单 |
| 项目总结 |
| 售后服务任务单 |
| 客户回访 |
| 顾客满意度调查表 |
| 项目合同 |
| 技术协议 |
| 系统方案 |
| 供货清单 |
| 分项报价单 |
| 工程现场勘察报告 |
| 初设图纸 |
| 工程项目进度计划 |
| 项目经理任命书 |
| 技术偏离表 |
| 项目输出文档配置表 |
| 生产确定单 |
| 设备采购单 |
| 规约开发任务单 |
| 出厂调试任务单 |

## Schedule

| ID | WBS | Task | Duration | Start | Finish | Predecessors | Complete | Remaining | Total slack | Free slack | Constraint | 责任人（具体到人） |
| --- | --- | --- | --- | --- | --- | --- | --- | --- | --- | --- | --- | --- |
| 1 | 1 | **天安云谷二期0301地块系统集成实施进度计划** | 132d | 2017-12-20 A | 2018-04-30 |  | 3% | 127.4d |  |  |  |  |
| 2 | 1.1 | **1.项目启动** | 43d | 2017-12-20 A | 2018-01-31 |  | 16% | 36.21d |  |  |  | 交付运维部-华南区-刘昆 |
| 3 | 1.1.1 | 对接启动会 | 1d | 2017-12-20 A | 2017-12-20 A |  | 100% |  |  |  | finish no earlier than 2017-12-20 | 交付运维部-华南区-冯占秀，黄烨，翟伟生 |
| 4 | 1.1.2 | 厂家碰面会 | 1d | 2017-12-27 A | 2017-12-27 A |  | 100% |  |  |  | finish no earlier than 2017-12-27 |  |
| 5 | 1.1.3 | 服务器确定 | 8d? | 2018-01-10 A | 2018-01-17 |  | 50% | 4d? | 75d | 0d | start no earlier than 2018-01-10 |  |
| 6 | 1.1.4 | 服务器备货 | 7d | 2018-01-18 | 2018-01-24 | 5 |  |  | 75d | 0d | start no earlier than 2018-01-18 | 交付运维部-施工图设计组-徐飞鸿，黄烨，翟伟生 |
| 7 | 1.1.5 | FAT | 21d? | 2018-01-25 | 2018-02-14 | 6 |  |  | 75d |  | start no earlier than 2018-01-25 |  |
| 8 | 1.2 | **2.项目实施** | 5d | 2018-02-24 | 2018-02-28 |  |  |  |  |  |  | 交付运维部-华南区-刘昆 |
| 9 | 1.2.1 | 设备到货 | 3d | 2018-02-24 | 2018-02-26 |  |  |  | 13d | 0d | finish no earlier than 2018-02-26 | 交付运维部-华南区-汤振超 |
| 10 | 1.2.2 | 网络搭建 | 2d | 2018-02-27 | 2018-02-28 | 9 |  |  | 13d |  | finish no earlier than 2018-02-28 | 交付运维部-华南区-刘昆，汪贤浩 |
| 11 | 1.3 | **系统集成对接测试** | 13d | 2018-03-01 | 2018-03-13 |  |  |  |  |  |  |  |
| 12 | 1.3.1 | 门禁 | 2d? | 2018-03-01 | 2018-03-02 |  |  |  | 1d | 0d | start no earlier than 2018-03-01 |  |
| 13 | 1.3.2 | 视频 | 2d? | 2018-03-01 | 2018-03-02 |  |  |  | 1d | 0d | start no earlier than 2018-03-01 |  |
| 14 | 1.3.3 | BA | 2d? | 2018-03-03 | 2018-03-04 | 13 |  |  | 1d | 0d | start no earlier than 2018-03-03 |  |
| 15 | 1.3.4 | 电梯系统 | 2d? | 2018-03-03 | 2018-03-04 | 12 |  |  | 1d | 0d |  |  |
| 16 | 1.3.5 | 空调系统 | 2d? | 2018-03-05 | 2018-03-06 | 15 |  |  | 1d | 0d |  |  |
| 17 | 1.3.6 | 泛光照明系统 | 2d? | 2018-03-05 | 2018-03-06 | 14 |  |  | 1d | 0d |  |  |
| 18 | 1.3.7 | 巡更系统 | 2d? | 2018-03-07 | 2018-03-08 | 17 |  |  | 1d | 0d |  |  |
| 19 | 1.3.8 | 消防报警系统 | 2d? | 2018-03-07 | 2018-03-08 | 16 |  |  | 1d | 0d |  |  |
| 20 | 1.3.9 | 消防子系统（防火门监控、消防电源监控、电气火灾监控） | 2d? | 2018-03-09 | 2018-03-10 | 19 |  |  | 1d | 0d |  |  |
| 21 | 1.3.10 | 环境监测系统 | 2d? | 2018-03-09 | 2018-03-10 | 18 |  |  | 1d | 0d |  |  |
| 22 | 1.3.11 | 物联网照明系统 | 2d? | 2018-03-11 | 2018-03-12 | 21 |  |  | 1d |  |  |  |
| 23 | 1.3.12 | 空调计费系统 | 2d? | 2018-03-11 | 2018-03-12 | 20 |  |  | 1d | 0d |  |  |
| 24 | 1.3.13 | 智能停车场系统 | 1d | 2018-03-13 | 2018-03-13 | 23 |  |  | 48d |  | finish no earlier than 2018-03-13 |  |

Notes:
- 5: 1、完成对接协议方案的确认；2、子系统上传数据点表；3、数据呈现方式，提供子系统底图参考。（需经甲方审核确认）
- 6: 1、完成对接协议方案的确认；2、子系统上传数据点表；3、数据呈现方式，提供子系统底图参考。（需经甲方审核确认）
- 7: 1、服务器系统安装、数据库安装、一体化平台部署；2、基本功能测试；3、双机功能测试。
- 10: 在2018年2月27日之前必须网络搭建好，对我司的服务器IP分配完成，我司服务器上线可直接使用；
- 12: 前置条件：1、子系统厂家服务器就位满足测试条件，进行数据对接测试；2、最小单元显示效果输出（通过甲方确认）
- 13: 前置条件：1、子系统厂家服务器就位满足测试条件，进行数据对接测试；2、最小单元显示效果输出（通过甲方确认）
- 14: 前置条件：1、子系统厂家服务器就位满足测试条件，进行数据对接测试；2、最小单元显示效果输出（通过甲方确认）
- 15: 前置条件：1、子系统厂家服务器就位满足测试条件，进行数据对接测试；2、最小单元显示效果输出（通过甲方确认）;3、需接入BA系统。
- 16: 前置条件：1、子系统厂家服务器就位满足测试条件，进行数据对接测试；2、最小单元显示效果输出（通过甲方确认）
- 17: 前置条件：1、子系统厂家服务器就位满足测试条件，进行数据对接测试；2、最小单元显示效果输出（通过甲方确认）
- 18: 前置条件：1、子系统厂家服务器就位满足测试条件，进行数据对接测试；2、最小单元显示效果输出（通过甲方确认）
- 19: 前置条件：1、子系统厂家服务器就位满足测试条件，进行数据对接测试；2、最小单元显示效果输出（通过甲方确认）
- 20: 前置条件：1、子系统厂家服务器就位满足测试条件，进行数据对接测试；2、最小单元显示效果输出（通过甲方确认）
- 21: 前置条件：1、子系统厂家服务器就位满足测试条件，进行数据对接测试；2、最小单元显示效果输出（通过甲方确认）
- 22: 前置条件：1、子系统厂家服务器就位满足测试条件，进行数据对接测试；2、最小单元显示效果输出（通过甲方确认）
- 23: 前置条件：1、子系统厂家服务器就位满足测试条件，进行数据对接测试；2、最小单元显示效果输出（通过甲方确认）
- 24: 前置条件：1、子系统厂家服务器就位满足测试条件，进行数据对接测试；2、最小单元显示效果输出（通过甲方确认）

| ID | WBS | Task | Duration | Start | Finish | Predecessors | Total slack | Free slack | Constraint | 责任人（具体到人） |
| --- | --- | --- | --- | --- | --- | --- | --- | --- | --- | --- |
| 25 | 1.4 | **系统对接联调** | 38d | 2018-03-14 | 2018-04-20 | 10 |  |  |  | 交付运维部-华南区-刘昆 |
| 26 | 1.4.1 | 联调模块一 | 18d? | 2018-03-14 | 2018-03-31 |  | 40d |  | finish no earlier than 2018-03-31 |  |
| 27 | 1.4.2 | 联调模块一 | 28d? | 2018-03-14 | 2018-04-10 |  | 30d |  | finish no earlier than 2018-04-10 |  |
| 28 | 1.4.3 | 联调模块一 | 43d? | 2018-03-14 | 2018-04-25 |  | 10d | 0d | finish no earlier than 2018-04-25 |  |
| 29 | 1.4.4 | 系统平台销相 | 5d | 2018-04-26 | 2018-04-30 | 28 | 10d |  | finish no earlier than 2018-04-30 | 交付运维部-华南区-刘昆，交付运维部-华南区-冯占秀，交付运维部-华南区-汤振超 |
| 30 | 1.5 | **3.项目验收** | 10d | 2018-05-01 | 2018-05-10 |  |  |  |  | 交付运维部-华南区-刘昆 |
| 31 | 1.5.1 | 系统平台培训 | 5d | 2018-05-01 | 2018-05-05 |  | 2d |  | start no earlier than 2018-05-01 | 交付运维部-华南区-刘昆 |
| 32 | 1.5.2 | 系统平台资料上交 | 2d | 2018-05-06 | 2018-05-07 |  | 3d |  | finish no earlier than 2018-05-07 | 交付运维部-华南区-刘昆 |
| 33 | 1.5.3 | 验收结项 | 3d | 2018-05-08 | 2018-05-10 | 31 | 0d |  | finish no earlier than 2018-05-10 |  |

Notes:
- 26: 消防报警、电梯系统、物联网照明 、消防子系统（防火门监控、消防电源监控、电气火灾监控）
- 27: 巡更、门禁、停车场系统、泛光、环境监测
- 28: BA、视频、空调、天溯自有子系统
- 29: 以完成各子系统对接后甲方提供建议后为准
